# Planificación

Schedule from MS Project, 2014-03-18 to 2015-04-18, A marks actual dates.

## Calendars

- Estándar: Mon-Sun 09:00-13:00, 15:00-19:00. Exceptions (off unless hours are given): 2014-06-28 09:00-13:00, 15:00-19:00, 2014-10-25 09:00-13:00, 15:00-19:00, 2014-11-29 09:00-13:00, 15:00-19:00, 2015-01-03 09:00-13:00, 15:00-19:00, 2015-01-10 09:00-13:00, 15:00-19:00, 2015-02-14 09:00-13:00, 15:00-19:00.

## Resources

| Resource |
| --- |
| Facu |
| Paula |
| Florencia |
| Antonio |

## Schedule

| ID | WBS | Task | Type | Duration | Start | Finish | Predecessors | Complete | Constraint | Resources | Work | Actual work |
| --- | --- | --- | --- | --- | --- | --- | --- | --- | --- | --- | --- | --- |
| 1 | 1 | **Sprint 0** |  | 78d | 2014-03-18 A | 2014-06-03 A |  | 100% |  |  | 5800h | 5800h |
| 2 | 1.1 | **Realizar Propuesta Inicial** |  | 22d | 2014-03-18 A | 2014-04-08 A |  | 100% |  | Antonio; Facu; Florencia; Paula | 1344h | 1344h |
| 3 | 1.1.1 | Analizar la problematica y su contexto | manual | 7d | 2014-03-18 A | 2014-03-26 A |  | 100% | start no earlier than 2014-03-31 | Antonio; Facu; Florencia; Paula | 224h | 224h |
| 4 | 1.1.2 | Analizar viabilidad del proyecto | manual | 7d | 2014-03-18 A | 2014-03-26 A |  | 100% | start no earlier than 2014-03-31 | Antonio; Facu; Florencia; Paula | 224h | 224h |
| 5 | 1.1.3 | Definir propuesta de solucion | manual | 7d | 2014-03-18 A | 2014-03-26 A |  | 100% | start no earlier than 2014-03-31 | Antonio; Facu; Florencia; Paula | 224h | 224h |
| 6 | 1.1.4 | Preparar presentación | manual | 4d | 2014-03-31 A | 2014-04-03 A | 3, 4, 5 | 100% |  | Antonio; Facu; Florencia; Paula | 128h | 128h |
| 7 | 1.1.5 | Exponer | manual | 1d | 2014-04-08 A | 2014-04-08 A |  | 100% |  | Antonio; Facu; Florencia; Paula | 32h | 32h |
| 8 | 1.2 | **Realizar Calendarización** |  | 17d | 2014-04-15 A | 2014-05-07 A |  | 100% |  | Antonio; Facu; Florencia; Paula | 920h | 920h |
| 9 | 1.2.1 | Armar WBS | manual | 7d | 2014-04-15 A | 2014-04-23 A |  | 100% |  | Antonio; Facu; Florencia; Paula | 224h | 224h |
| 10 | 1.2.2 | Correccion WBS |  | 2d | 2014-04-24 A | 2014-04-25 A | 9 | 100% |  | Antonio; Facu; Florencia; Paula | 64h | 64h |
| 11 | 1.2.3 | Armar calendario | manual | 7d | 2014-04-28 A | 2014-05-06 A | 10 | 100% |  | Antonio; Facu; Florencia; Paula | 224h | 224h |
| 12 | 1.3 | **Realizar Estudio Inicial** |  | 32d | 2014-04-08 A | 2014-05-09 A | 2 | 100% |  | Antonio; Facu; Florencia; Paula | 2080h | 2080h |
| 13 | 1.3.1 | Analizar la problematica y su contexto |  | 14d | 2014-04-09 A | 2014-04-28 A |  | 100% |  | Antonio; Facu; Florencia; Paula | 448h | 448h |
| 14 | 1.3.2 | Analizar soluciones existentes en el mercado |  | 2d | 2014-04-09 A | 2014-04-10 A |  | 100% |  | Antonio; Facu; Florencia; Paula | 64h | 64h |
| 15 | 1.3.3 | Definir alcances |  | 7d | 2014-04-09 A | 2014-04-17 A |  | 100% |  | Antonio; Facu; Florencia; Paula | 224h | 224h |
| 16 | 1.3.4 | Realizar analisis de Factibilidad | manual | 1d | 2014-04-08 A | 2014-04-09 A |  | 100% |  | Antonio; Facu; Florencia; Paula | 32h | 32h |
| 17 | 1.3.5 | Realizar Encuestas |  | 10d | 2014-04-28 A | 2014-05-09 A |  | 100% | finish no earlier than 2014-05-09 | Antonio; Facu; Florencia; Paula | 320h | 320h |
| 18 | 1.3.6 | Estudiar dominio | manual | 7d | 2014-04-08 A | 2014-04-16 A |  | 100% |  | Antonio; Facu; Florencia; Paula | 224h | 224h |
| 19 | 1.4 | Realizar plan de configuración | manual | 7d | 2014-05-07 A | 2014-05-13 A |  | 100% |  | Florencia | 56h | 56h |
| 20 | 1.5 | **Realizar Plan de Riesgos** |  | 8d | 2014-05-13 A | 2014-05-20 A |  | 100% |  | Facu | 104h | 104h |
| 21 | 1.5.1 | Identificar, clasificar y priorizar riesgos | manual | 3d | 2014-05-13 A | 2014-05-15 A |  | 100% |  | Facu | 24h | 24h |
| 22 | 1.5.2 | Realizar plan mitigación | manual | 2d | 2014-05-16 A | 2014-05-19 A | 21 | 100% |  | Facu | 16h | 16h |
| 23 | 1.5.3 | Realizar plan de contingencia | manual | 2d | 2014-05-16 A | 2014-05-19 A | 21 | 100% |  | Facu | 16h | 16h |
| 24 | 1.6 | **Realizar Plan de Métricas** |  | 7d | 2014-05-20 A | 2014-05-26 A |  | 100% |  | Paula | 168h | 168h |
| 25 | 1.6.1 | Identificar metricas | manual | 7d | 2014-05-20 A | 2014-05-26 A |  | 100% |  | Paula | 56h | 56h |
| 26 | 1.6.2 | Definir responsables y método de medicion | manual | 7d | 2014-05-20 A | 2014-05-26 A |  | 100% |  | Paula | 56h | 56h |

| ID | WBS | Task | Type | Duration | Start | Finish | Predecessors | Complete | Actual finish | Constraint | Resources | Work | Actual work |
| --- | --- | --- | --- | --- | --- | --- | --- | --- | --- | --- | --- | --- | --- |
| 27 | 1.7 | **Realizar Plan de Testing** |  | 9d | 2014-05-20 A | 2014-05-28 A |  | 100% |  |  | Paula; Florencia | 232h | 232h |
| 28 | 1.7.1 | Definir tipos de pruebas |  | 7d | 2014-05-20 A | 2014-05-28 A |  | 100% |  |  | Paula | 56h | 56h |
| 29 | 1.7.2 | Definir estrategia de prueba |  | 7d | 2014-05-20 A | 2014-05-28 A |  | 100% |  |  | Paula | 56h | 56h |
| 30 | 1.7.3 | Definir nivel de cobertura |  | 7d | 2014-05-20 A | 2014-05-28 A |  | 100% |  |  | Paula | 56h | 56h |
| 31 | 1.7.4 | Correcciones | manual | 1d | 2014-05-24 A | 2014-05-24 A |  | 100% |  |  | Florencia | 8h | 8h |
| 32 | 1.8 | Analizar Impacto Ambiental | manual | 7d | 2014-05-20 A | 2014-05-26 A |  | 100% |  |  | Antonio; Facu; Florencia; Paula | 224h | 224h |
| 33 | 1.9 | **Realizar Presentación de Estudio Inicial** |  | 7d | 2014-05-19 A | 2014-05-25 | 12 | 100% | 2014-05-27 |  | Antonio; Facu; Florencia; Paula | 448h | 448h |
| 34 | 1.9.1 | Preparar presentación |  | 3d | 2014-05-19 A | 2014-05-21 A |  | 100% |  |  | Antonio; Facu; Florencia; Paula | 96h | 96h |
| 35 | 1.9.2 | Elaborar presentación |  | 3d | 2014-05-22 A | 2014-05-24 A | 34 | 100% |  |  | Antonio; Facu; Florencia; Paula | 96h | 96h |
| 36 | 1.9.3 | Exponer |  | 1d | 2014-05-27 A | 2014-05-27 A |  | 100% |  | start no earlier than 2014-05-27 | Antonio; Facu; Florencia; Paula | 32h | 32h |
| 37 | 1.10 | **Preparar Product Backlog** |  | 6d | 2014-05-29 A | 2014-06-03 A | 33, 32, 27, 24 | 100% |  |  | Antonio; Paula | 96h | 96h |
| 38 | 1.10.1 | Identificar historias de usuario |  | 4d | 2014-05-29 A | 2014-06-01 A |  | 100% |  |  |  |  |  |
| 39 | 1.10.2 | Priorizar historias de usuario |  | 4d | 2014-05-29 A | 2014-06-01 A |  | 100% |  |  |  |  |  |
| 40 | 1.10.3 | Estimar historias de usuario |  | 4d | 2014-05-29 A | 2014-06-01 A |  | 100% |  |  |  |  |  |
| 41 | 1.11 | **Realizar ERS** |  | 3d | 2014-05-29 A | 2014-05-31 A | 33, 32, 27, 24 | 100% |  |  | Antonio; Facu; Florencia; Paula | 96h | 96h |
| 42 | 1.11.1 | Entrevistar expertos en dominio |  | 3d | 2014-05-29 A | 2014-05-31 A |  | 100% |  |  |  |  |  |
| 43 | 1.11.2 | Identificar funcionalidades |  | 3d | 2014-05-29 A | 2014-05-31 A |  | 100% |  |  |  |  |  |
| 44 | 1.11.3 | Especificar funcionalidades |  | 3d | 2014-05-29 A | 2014-05-31 A |  | 100% |  |  |  |  |  |
| 45 | 1.11.4 | Definir reglas de negocio |  | 3d | 2014-05-29 A | 2014-05-31 A |  | 100% |  |  |  |  |  |
| 46 | 1.12 | **Definir Metodología y Herramientas de Trabajo** |  | 1d | 2014-06-01 A | 2014-06-01 A | 41 | 100% |  |  | Antonio; Facu; Florencia; Paula | 32h | 32h |
| 47 | 1.12.1 | Definir y preparar entorno de trabajo |  | 1d | 2014-06-01 A | 2014-06-01 A |  | 100% |  |  |  |  |  |
| 48 | 1.12.2 | Definir ciclo de vida del sw |  | 1d | 2014-06-01 A | 2014-06-01 A |  | 100% |  |  |  |  |  |
| 49 | 2 | **Sprint 1** |  | 22d | 2014-06-07 A | 2014-06-28 A | 1 | 100% |  |  |  | 2560h | 2560h |
| 50 | 2.1 | Realizar Sprint Planning | manual | 1d | 2014-06-07 A | 2014-06-07 A |  | 100% |  |  | Antonio; Facu; Florencia; Paula | 32h | 32h |
| 51 | 2.2 | Investigar tecnologías de desarrollo | manual | 22d | 2014-06-07 A | 2014-06-28 A |  | 100% |  |  | Facu; Paula | 352h | 352h |

| ID | WBS | Task | Type | Duration | Start | Finish | Complete | Constraint | Resources | Work | Actual work |
| --- | --- | --- | --- | --- | --- | --- | --- | --- | --- | --- | --- |
| 52 | 2.3 | **Registrar Edición** |  | 22d | 2014-06-07 A | 2014-06-28 A | 100% |  | Facu; Paula | 352h | 352h |
| 53 | 2.3.1 | Analizar y Especificar los requerimientos | manual | 1d | 2014-06-07 A | 2014-06-07 A | 100% |  |  |  |  |
| 54 | 2.3.2 | Diseñar Solución | manual | 1d | 2014-06-07 A | 2014-06-07 A | 100% |  |  |  |  |
| 55 | 2.3.3 | Desarrollar | manual | 1d | 2014-06-07 A | 2014-06-07 A | 100% |  |  |  |  |
| 56 | 2.3.4 | Diseño de UI | manual | 1d | 2014-06-07 A | 2014-06-07 A | 100% |  |  |  |  |
| 57 | 2.3.5 | Testear | manual | 1d | 2014-06-07 A | 2014-06-07 A | 100% |  |  |  |  |
| 58 | 2.4 | **Registrar Campeonato** |  | 22d | 2014-06-07 A | 2014-06-28 A | 100% |  | Antonio; Paula | 176h | 176h |
| 59 | 2.4.1 | Analizar y Especificar los requerimientos | manual | 1d | 2014-06-07 A | 2014-06-07 A | 100% |  |  |  |  |
| 60 | 2.4.2 | Diseñar Solución | manual | 1d | 2014-06-07 A | 2014-06-07 A | 100% |  |  |  |  |
| 61 | 2.4.3 | Desarrollar | manual | 1d | 2014-06-07 A | 2014-06-07 A | 100% |  |  |  |  |
| 62 | 2.4.4 | Diseño de UI | manual | 1d | 2014-06-07 A | 2014-06-07 A | 100% |  |  |  |  |
| 63 | 2.4.5 | Testear | manual | 1d | 2014-06-07 A | 2014-06-07 A | 100% |  |  |  |  |
| 64 | 2.5 | **Registrar Usuario** |  | 22d | 2014-06-07 A | 2014-06-28 A | 100% |  | Facu; Florencia | 736h | 736h |
| 65 | 2.5.1 | Analizar y Especificar los requerimientos | manual | 8d | 2014-06-07 A | 2014-06-14 A | 100% |  | Antonio; Florencia | 128h | 128h |
| 66 | 2.5.2 | **Diseñar Solución** |  | 1d | 2014-06-14 A | 2014-06-14 A | 100% |  |  |  |  |
| 67 | 2.5.2.1 | Actualizar modelos existentes | manual | 1d | 2014-06-14 A | 2014-06-14 A | 100% |  |  |  |  |
| 68 | 2.5.2.2 | Crear nuevos modelos | manual | 1d | 2014-06-14 A | 2014-06-14 A | 100% |  |  |  |  |
| 69 | 2.5.3 | Desarrollar | manual | 6d | 2014-06-21 A | 2014-06-26 A | 100% |  | Antonio; Facu; Paula | 144h | 144h |
| 70 | 2.5.4 | Diseño de UI | manual | 11d | 2014-06-14 A | 2014-06-24 A | 100% |  | Facu | 88h | 88h |
| 71 | 2.5.5 | Testear | manual | 3d | 2014-06-26 A | 2014-06-28 A | 100% |  | Paula | 24h | 24h |
| 72 | 2.6 | Consultar Ediciones y Torneos | manual | 22d | 2014-06-07 A | 2014-06-28 A | 100% |  | Paula | 176h | 176h |
| 73 | 2.7 | Iniciar Sesión | manual | 22d | 2014-06-07 A | 2014-06-28 A | 100% |  | Facu | 176h | 176h |
| 74 | 2.8 | Cerrar Sesión | manual | 22d | 2014-06-07 A | 2014-06-28 A | 100% |  | Facu | 176h | 176h |
| 75 | 2.9 | Gestionar cambios | manual | 22d | 2014-06-07 A | 2014-06-28 A | 100% |  | Florencia | 176h | 176h |
| 76 | 2.10 | Realizar seguimiento y control de riesgos | manual | 22d | 2014-06-07 A | 2014-06-28 A | 100% |  | Facu | 176h | 176h |
| 77 | 2.11 | Realizar Sprint Review | manual | 1d | 2014-06-28 A | 2014-06-28 A | 100% |  | Antonio; Facu; Florencia; Paula | 32h | 32h |
| 78 | 3 | Realizar reunión retrospectiva |  | 1d | 2014-06-28 A | 2014-06-28 A | 100% | start no earlier than 2014-06-28 | Antonio; Facu; Florencia; Paula | 32h | 32h |

| ID | WBS | Task | Type | Duration | Start | Finish | Predecessors | Complete | Actual start | Actual finish | Constraint | Resources | Work | Actual work |
| --- | --- | --- | --- | --- | --- | --- | --- | --- | --- | --- | --- | --- | --- | --- |
| 79 | 4 | **Sprint 2** |  | 22d | 2014-06-28 A | 2014-07-19 | 78 | 100% |  | 2014-06-28 |  |  | 144h | 144h |
| 80 | 4.1 | Realizar Sprint Planning | manual | 1d | 2014-06-28 A | 2014-06-28 A |  | 100% |  |  |  | Antonio; Facu; Florencia; Paula | 32h | 32h |
| 81 | 4.2 | **Registrar Equipo** |  | 1d? | 2014-06-28 A | 2014-06-28 A |  | 100% |  |  |  |  | 64h | 64h |
| 82 | 4.2.1 | Analizar y Especificar los requerimientos | manual | 1d | 2014-06-28 A | 2014-06-28 A |  | 100% |  |  |  | Florencia; Paula | 8h | 8h |
| 83 | 4.2.2 | **Diseñar Solución** |  | 1d? | 2014-06-28 A | 2014-06-28 A |  | 100% |  |  |  | Florencia | 24h | 24h |
| 84 | 4.2.2.1 | Actualizar modelos existentes | manual | 1d | 2014-06-28 A | 2014-06-28 A |  | 100% |  |  |  | Florencia | 8h | 8h |
| 85 | 4.2.2.2 | Crear nuevos modelos | manual | 1d | 2014-06-28 A | 2014-06-28 A |  | 100% |  |  |  | Florencia | 8h | 8h |
| 86 | 4.2.3 | Desarrollar | manual | 1d | 2014-06-28 A | 2014-06-28 A |  | 100% |  |  |  | Antonio; Facu; Florencia; Paula | 32h | 32h |
| 87 | 4.3 | **Modificar Campeonato** |  | 1d | 2014-06-28 A | 2014-06-28 A |  | 100% |  |  |  |  |  |  |
| 88 | 4.3.1 | Análisis y desarrollo | manual | 1d | 2014-06-28 A | 2014-06-28 A |  | 100% |  |  |  |  |  |  |
| 89 | 4.4 | **Corrección de Bugs** |  | 1d | 2014-06-28 A | 2014-06-28 A |  | 100% |  |  |  |  |  |  |
| 90 | 4.4.1 | Análisis y desarrollo | manual | 1d | 2014-06-28 A | 2014-06-28 A |  | 100% |  |  |  |  |  |  |
| 91 | 4.5 | **Registrar opciones de Personalización de Edición** |  | 1d | 2014-06-28 A | 2014-06-28 A |  | 100% |  |  |  |  |  |  |
| 92 | 4.5.1 | Análisis y desarrollo | manual | 1d | 2014-06-28 A | 2014-06-28 A |  | 100% |  |  |  |  |  |  |
| 93 | 4.6 | Testear | manual | 1d | 2014-06-28 A | 2014-06-28 A |  | 100% |  |  |  | Paula | 8h | 8h |
| 94 | 4.7 | Realizar seguimiento y control de riesgos | manual | 1d | 2014-06-28 A | 2014-06-28 A |  | 100% |  |  |  | Florencia | 8h | 8h |
| 95 | 4.8 | Realizar Sprint Review | manual | 1d | 2014-06-28 A | 2014-06-28 A |  | 100% |  |  |  | Antonio; Facu; Florencia; Paula | 32h | 32h |
| 96 | 5 | Realizar reunión retrospectiva |  | 1d | 2014-07-19 A | 2014-07-19 A |  | 100% |  |  | start no earlier than 2014-07-19 | Antonio; Facu; Florencia; Paula | 32h | 32h |
| 97 | 6 | **Sprint 3** |  | 22d | 2014-07-19 | 2014-08-09 A | 96 | 100% | 2014-07-13 |  |  |  | 2072h | 2072h |
| 98 | 6.1 | Realizar Sprint Planning | manual | 1d | 2014-07-19 A | 2014-07-19 A |  | 100% |  |  |  | Antonio; Facu; Florencia; Paula | 32h | 32h |
| 99 | 6.2 | Analizar y Especificar los requerimientos | manual | 4d | 2014-07-19 A | 2014-07-22 A |  | 100% |  |  |  | Facu; Florencia | 64h | 64h |
| 100 | 6.3 | **Diseñar Solución** |  | 4d | 2014-07-19 A | 2014-07-22 A |  | 100% |  |  |  | Antonio; Paula | 128h | 128h |
| 101 | 6.3.1 | Actualizar modelos existentes | manual | 4d | 2014-07-19 A | 2014-07-22 A |  | 100% |  |  |  | Antonio | 32h | 32h |
| 102 | 6.3.2 | Crear nuevos modelos | manual | 4d | 2014-07-19 A | 2014-07-22 A |  | 100% |  |  |  | Paula | 32h | 32h |
| 103 | 6.4 | Reestructuración de Código | manual | 22d | 2014-07-19 A | 2014-08-09 A |  | 100% |  |  |  | Antonio; Facu; Florencia; Paula | 704h | 704h |

| ID | WBS | Task | Type | Duration | Start | Finish | Predecessors | Complete | Actual finish | Constraint | Resources | Work | Actual work |
| --- | --- | --- | --- | --- | --- | --- | --- | --- | --- | --- | --- | --- | --- |
| 104 | 6.5 | **Modificar Equipo** |  | 8d | 2014-07-19 A | 2014-07-26 A |  | 100% |  |  | Paula | 64h | 64h |
| 105 | 6.5.1 | Análisis y desarrollo | manual | 1d | 2014-07-19 A | 2014-07-19 A |  | 100% |  |  |  |  |  |
| 106 | 6.6 | **Consultar Equipo** |  | 15d | 2014-07-19 A | 2014-08-02 A |  | 100% |  |  | Paula | 120h | 120h |
| 107 | 6.6.1 | Análisis y desarrollo | manual | 1d | 2014-07-19 A | 2014-07-19 A |  | 100% |  |  |  |  |  |
| 108 | 6.7 | **Corrección de Bugs** |  | 28d | 2014-07-13 A | 2014-08-09 A |  | 100% |  |  | Antonio; Facu; Florencia; Paula | 896h | 896h |
| 109 | 6.7.1 | Análisis y desarrollo | manual | 1d | 2014-07-13 A | 2014-07-13 A |  | 100% |  |  |  |  |  |
| 110 | 6.8 | Preparacion de presentación de grado de Avances | manual | 1d | 2014-08-09 A | 2014-08-09 A |  | 100% |  |  | Antonio; Facu; Florencia; Paula | 32h | 32h |
| 111 | 6.9 | Realizar Sprint Review | manual | 1d | 2014-07-19 A | 2014-07-19 A |  | 100% |  |  | Antonio; Facu; Florencia; Paula | 32h | 32h |
| 112 | 7 | Realizar reunión retrospectiva |  | 1d | 2014-08-09 A | 2014-08-09 A |  | 100% |  | start no earlier than 2014-08-09 | Antonio; Facu; Florencia; Paula | 32h | 32h |
| 113 | 8 | **Sprint 4** |  | 21d | 2014-08-09 A | 2014-08-30 A | 112 | 100% |  |  |  | 3728h | 3728h |
| 114 | 8.1 | Realizar Sprint Planning | manual | 1d | 2014-08-09 A | 2014-08-10 A |  | 100% |  |  | Antonio; Facu; Florencia; Paula | 32h | 32h |
| 115 | 8.2 | Investigar Algoritmos de Generación de fixture | manual | 1d | 2014-08-09 A | 2014-08-10 A |  | 100% |  |  | Antonio; Florencia | 16h | 16h |
| 116 | 8.3 | **Administrar Canchas** |  | 21d | 2014-08-09 A | 2014-08-30 A |  | 100% |  |  | Paula | 168h | 168h |
| 117 | 8.3.1 | **Registrar Cancha** |  | 21d | 2014-08-09 A | 2014-08-30 |  | 100% | 2014-08-10 |  |  |  |  |
| 118 | 8.3.1.1 | Desarrollo | manual | 1d | 2014-08-09 A | 2014-08-10 A |  | 100% |  |  |  |  |  |
| 119 | 8.3.1.2 | Testing | manual | 1d | 2014-08-09 A | 2014-08-10 A |  | 100% |  |  |  |  |  |
| 120 | 8.3.2 | **Modificar Cancha** |  | 21d | 2014-08-09 A | 2014-08-30 |  | 100% | 2014-08-10 |  |  |  |  |
| 121 | 8.3.2.1 | Desarrollo | manual | 1d | 2014-08-09 A | 2014-08-10 A |  | 100% |  |  |  |  |  |
| 122 | 8.3.2.2 | Testing | manual | 1d | 2014-08-09 A | 2014-08-10 A |  | 100% |  |  |  |  |  |
| 123 | 8.3.3 | **Eliminar Cancha** |  | 21d | 2014-08-09 A | 2014-08-30 |  | 100% | 2014-08-10 |  |  |  |  |
| 124 | 8.3.3.1 | Desarrollo | manual | 1d | 2014-08-09 A | 2014-08-10 A |  | 100% |  |  |  |  |  |
| 125 | 8.3.3.2 | Testing | manual | 1d | 2014-08-09 A | 2014-08-10 A |  | 100% |  |  |  |  |  |
| 126 | 8.3.4 | **Consultar Cancha** |  | 21d | 2014-08-09 A | 2014-08-30 |  | 100% | 2014-08-10 |  |  |  |  |
| 127 | 8.3.4.1 | Desarrollo | manual | 1d | 2014-08-09 A | 2014-08-10 A |  | 100% |  |  |  |  |  |
| 128 | 8.3.4.2 | Testing | manual | 1d | 2014-08-09 A | 2014-08-10 A |  | 100% |  |  |  |  |  |

| ID | WBS | Task | Type | Duration | Start | Finish | Complete | Actual finish | Resources | Work | Actual work |
| --- | --- | --- | --- | --- | --- | --- | --- | --- | --- | --- | --- |
| 129 | 8.4 | **Administrar Jugadores** |  | 21d | 2014-08-09 A | 2014-08-29 A | 100% |  | Paula; Facu | 336h | 336h |
| 130 | 8.4.1 | **Registrar Jugador** |  | 21d | 2014-08-09 A | 2014-08-29 | 100% | 2014-08-10 |  |  |  |
| 131 | 8.4.1.1 | Desarrollo | manual | 2d | 2014-08-09 A | 2014-08-10 A | 100% |  |  |  |  |
| 132 | 8.4.1.2 | Testing | manual | 2d | 2014-08-09 A | 2014-08-10 A | 100% |  |  |  |  |
| 133 | 8.4.2 | **Modificar Jugador** |  | 21d | 2014-08-09 A | 2014-08-29 | 100% | 2014-08-10 |  |  |  |
| 134 | 8.4.2.1 | Desarrollo | manual | 2d | 2014-08-09 A | 2014-08-10 A | 100% |  |  |  |  |
| 135 | 8.4.2.2 | Testing | manual | 1d | 2014-08-09 A | 2014-08-09 A | 100% |  |  |  |  |
| 136 | 8.4.3 | **Eliminar Jugador** |  | 21d | 2014-08-09 A | 2014-08-29 | 100% | 2014-08-09 |  |  |  |
| 137 | 8.4.3.1 | Desarrollo | manual | 1d | 2014-08-09 A | 2014-08-09 A | 100% |  |  |  |  |
| 138 | 8.4.3.2 | Testing | manual | 1d | 2014-08-09 A | 2014-08-09 A | 100% |  |  |  |  |
| 139 | 8.4.4 | Consultar Jugador | manual | 21d | 2014-08-09 A | 2014-08-29 A | 100% |  |  |  |  |
| 140 | 8.5 | **Administrar Equipos** |  | 21d | 2014-08-09 A | 2014-08-30 A | 100% |  | Paula; Facu | 168h | 168h |
| 141 | 8.5.1 | **Eliminar Equipo** |  | 21d | 2014-08-09 A | 2014-08-30 | 100% | 2014-08-10 |  |  |  |
| 142 | 8.5.1.1 | Desarrollo | manual | 1d | 2014-08-09 A | 2014-08-10 A | 100% |  |  |  |  |
| 143 | 8.5.1.2 | Testing | manual | 1d | 2014-08-09 A | 2014-08-10 A | 100% |  |  |  |  |
| 144 | 8.6 | **Administrar Árbitros** |  | 21d | 2014-08-09 A | 2014-08-29 A | 100% |  | Paula | 168h | 168h |
| 145 | 8.6.1 | **Registrar Árbitro** |  | 21d | 2014-08-09 A | 2014-08-29 | 100% | 2014-08-10 |  |  |  |
| 146 | 8.6.1.1 | Desarrollo | manual | 1d | 2014-08-10 A | 2014-08-10 A | 100% |  |  |  |  |
| 147 | 8.6.1.2 | Testing | manual | 1d | 2014-08-09 A | 2014-08-09 A | 100% |  |  |  |  |
| 148 | 8.6.2 | **Modificar Árbitro** |  | 1d | 2014-08-09 A | 2014-08-09 A | 100% |  |  |  |  |
| 149 | 8.6.2.1 | Desarrollo | manual | 1d | 2014-08-09 A | 2014-08-09 A | 100% |  |  |  |  |
| 150 | 8.6.2.2 | Testing | manual | 1d | 2014-08-09 A | 2014-08-09 A | 100% |  |  |  |  |
| 151 | 8.6.3 | **Eliminar Árbitro** |  | 1d | 2014-08-09 A | 2014-08-09 A | 100% |  |  |  |  |
| 152 | 8.6.3.1 | Desarrollo | manual | 1d | 2014-08-09 A | 2014-08-09 A | 100% |  |  |  |  |
| 153 | 8.6.3.2 | Testing | manual | 1d | 2014-08-09 A | 2014-08-09 A | 100% |  |  |  |  |

| ID | WBS | Task | Type | Duration | Start | Finish | Complete | Actual finish | Resources | Work | Actual work |
| --- | --- | --- | --- | --- | --- | --- | --- | --- | --- | --- | --- |
| 154 | 8.6.4 | **Consultar Árbitro** |  | 1d | 2014-08-09 A | 2014-08-09 A | 100% |  |  |  |  |
| 155 | 8.6.4.1 | Desarrollo | manual | 1d | 2014-08-09 A | 2014-08-09 A | 100% |  |  |  |  |
| 156 | 8.6.4.2 | Testing | manual | 1d | 2014-08-09 A | 2014-08-09 A | 100% |  |  |  |  |
| 157 | 8.7 | **Modificar Usuario** |  | 21d | 2014-08-09 A | 2014-08-30 A | 100% |  | Florencia | 168h | 168h |
| 158 | 8.7.1 | Desarrollo | manual | 1d | 2014-08-09 A | 2014-08-10 A | 100% |  |  |  |  |
| 159 | 8.7.2 | Testing | manual | 1d | 2014-08-09 A | 2014-08-10 A | 100% |  |  |  |  |
| 160 | 8.8 | **Administrar Edición** |  | 21d | 2014-08-09 A | 2014-08-30 A | 100% |  | Antonio; Facu; Florencia; Paula | 2064h | 2064h |
| 161 | 8.8.1 | **Eliminar Edición No Comenzada** |  | 21d | 2014-08-10 A | 2014-08-30 A | 100% |  | Antonio; Facu; Florencia; Paula | 680h | 680h |
| 162 | 8.8.1.1 | Desarrollo | manual | 1d | 2014-08-10 A | 2014-08-10 A | 100% |  | Paula | 8h | 8h |
| 163 | 8.8.1.2 | Testing | manual | 1d | 2014-08-10 A | 2014-08-10 A | 100% |  |  |  |  |
| 164 | 8.8.2 | **Modificar Edición No Comenzada** |  | 21d | 2014-08-09 A | 2014-08-30 A | 100% |  | Paula | 176h | 176h |
| 165 | 8.8.2.1 | Desarrollo | manual | 1d | 2014-08-09 A | 2014-08-10 A | 100% |  | Paula | 8h | 8h |
| 166 | 8.8.2.2 | Testing | manual | 1d | 2014-08-09 A | 2014-08-10 A | 100% |  |  |  |  |
| 167 | 8.8.3 | **Registrar Configuraciones** |  | 21d | 2014-08-09 A | 2014-08-30 A | 100% |  | Antonio; Florencia | 352h | 352h |
| 168 | 8.8.3.1 | Desarrollo | manual | 1d | 2014-08-09 A | 2014-08-10 A | 100% |  | Antonio; Florencia | 16h | 16h |
| 169 | 8.8.3.2 | Testing | manual | 1d | 2014-08-09 A | 2014-08-10 A | 100% |  |  |  |  |
| 170 | 8.8.4 | **Asignar equipos a la edición** |  | 21d | 2014-08-09 A | 2014-08-30 A | 100% |  | Facu; Paula | 184h | 184h |
| 171 | 8.8.4.1 | Diseño de Interfaz | manual | 1d | 2014-08-09 A | 2014-08-10 A | 100% |  | Facu | 8h | 8h |
| 172 | 8.8.4.2 | Desarrollar | manual | 1d | 2014-08-09 A | 2014-08-10 A | 100% |  | Paula | 8h | 8h |
| 173 | 8.8.4.3 | Testear | manual | 1d | 2014-08-09 A | 2014-08-10 A | 100% |  |  |  |  |
| 174 | 8.9 | **Generación de Fixture Todos contra todos** |  | 21d | 2014-08-09 A | 2014-08-30 A | 100% |  | Antonio; Facu; Florencia | 576h | 576h |
| 175 | 8.9.1 | **Registrar Fase** |  | 21d | 2014-08-09 A | 2014-08-30 | 100% | 2014-08-10 |  | 40h | 40h |
| 176 | 8.9.1.1 | Diseño de solución | manual | 1d | 2014-08-09 A | 2014-08-10 A | 100% |  | Antonio; Florencia | 16h | 16h |
| 177 | 8.9.1.2 | Diseño de Interfaz | manual | 1d | 2014-08-09 A | 2014-08-10 A | 100% |  | Antonio; Facu | 16h | 16h |
| 178 | 8.9.1.3 | Desarrollo | manual | 1d | 2014-08-09 A | 2014-08-10 A | 100% |  | Florencia | 8h | 8h |
| 179 | 8.9.1.4 | Testing | manual | 1d | 2014-08-09 A | 2014-08-10 A | 100% |  |  |  |  |

| ID | WBS | Task | Type | Duration | Start | Finish | Predecessors | Complete | Actual finish | Constraint | Resources | Work | Actual work |
| --- | --- | --- | --- | --- | --- | --- | --- | --- | --- | --- | --- | --- | --- |
| 180 | 8.9.2 | **Mostrar Fixture** |  | 21d | 2014-08-10 A | 2014-08-30 |  | 100% | 2014-08-10 |  |  | 32h | 32h |
| 181 | 8.9.2.1 | Diseño de Interfaz | manual | 1d | 2014-08-10 A | 2014-08-10 A |  | 100% |  |  | Antonio; Facu | 16h | 16h |
| 182 | 8.9.2.2 | Desarrollo | manual | 1d | 2014-08-10 A | 2014-08-10 A |  | 100% |  |  | Florencia; Paula | 16h | 16h |
| 183 | 8.9.2.3 | Testing |  | 1d | 2014-08-10 A | 2014-08-10 A |  | 100% |  |  |  |  |  |
| 184 | 8.10 | Realizar Sprint Review |  | 1d | 2014-08-30 A | 2014-08-30 A |  | 100% |  | finish no earlier than 2014-08-30 | Antonio; Facu; Florencia; Paula | 32h | 32h |
| 185 | 9 | Realizar reunión retrospectiva |  | 1d | 2014-08-30 A | 2014-08-30 A |  | 100% |  | start no earlier than 2014-08-30 | Antonio; Facu; Florencia; Paula | 32h | 32h |
| 186 | 10 | **Sprint 5** |  | 22d | 2014-08-30 A | 2014-09-20 A | 185 | 100% |  |  |  | 1040h | 1040h |
| 187 | 10.1 | Realizar Sprint Planning | manual | 1d | 2014-08-30 A | 2014-08-30 A |  | 100% |  |  | Antonio; Facu; Florencia; Paula | 32h | 32h |
| 188 | 10.2 | Administrar Jugadores | manual | 5d | 2014-09-02 A | 2014-09-06 A |  | 100% |  |  | Facu; Paula | 80h | 80h |
| 189 | 10.3 | **Administrar Noticias** |  | 12d | 2014-09-02 A | 2014-09-13 A |  | 100% |  |  | Paula | 480h | 480h |
| 190 | 10.3.1 | Registrar Noticias | manual | 12d | 2014-09-02 A | 2014-09-13 A |  | 100% |  |  | Paula | 96h | 96h |
| 191 | 10.3.2 | Modificar Noticias | manual | 12d | 2014-09-02 A | 2014-09-13 A |  | 100% |  |  | Paula | 96h | 96h |
| 192 | 10.3.3 | Eliminar Noticias | manual | 12d | 2014-09-02 A | 2014-09-13 A |  | 100% |  |  | Paula | 96h | 96h |
| 193 | 10.3.4 | Consultar Noticias | manual | 12d | 2014-09-02 A | 2014-09-13 A |  | 100% |  |  | Paula | 96h | 96h |
| 194 | 10.4 | **Administrar Partidos** |  | 8d | 2014-09-13 A | 2014-09-20 A |  | 100% |  |  | Florencia; Facu | 192h | 192h |
| 195 | 10.4.1 | Diseño de IU | manual | 8d | 2014-09-13 A | 2014-09-20 A |  | 100% |  |  | Facu | 64h | 64h |
| 196 | 10.5 | Modificación de datos de un usuario | manual | 4d | 2014-08-30 A | 2014-09-02 A |  | 100% |  |  | Florencia | 32h | 32h |
| 197 | 10.6 | Corrección de Bugs | manual | 12d | 2014-09-09 A | 2014-09-20 A |  | 100% |  |  | Antonio; Facu | 192h | 192h |
| 198 | 10.7 | Realizar Sprint Review | manual | 1d | 2014-09-20 A | 2014-09-20 A |  | 100% |  |  | Antonio; Facu; Florencia; Paula | 32h | 32h |
| 199 | 11 | Realizar reunión retrospectiva |  | 1d | 2014-09-20 A | 2014-09-20 A |  | 100% |  |  | Antonio; Facu; Florencia; Paula | 32h | 32h |
| 200 | 12 | **Sprint 6** |  | 22d | 2014-09-20 A | 2014-10-11 A |  | 100% |  |  |  | 1584h | 1584h |
| 201 | 12.1 | Realizar Sprint Planning | manual | 1d | 2014-09-20 A | 2014-09-20 A |  | 100% |  |  | Antonio; Facu; Florencia; Paula | 32h | 32h |
| 202 | 12.2 | Generar fixture todos contra todos una fase - muchos grupos | manual | 8d | 2014-09-20 A | 2014-09-27 A |  | 100% |  |  | Antonio; Florencia | 128h | 128h |
| 203 | 12.3 | Modificar Configuracion de edición | manual | 8d | 2014-09-20 A | 2014-09-27 A |  | 100% |  |  | Florencia | 64h | 64h |
| 204 | 12.4 | Modificar orden de las fechas de fixture una fase - 1 grupo, todos contra todos | manual | 8d | 2014-09-20 A | 2014-09-27 A |  | 100% |  |  | Facu; Paula | 128h | 128h |
| 205 | 12.5 | Diseño de la solución para registrar partidos | manual | 8d | 2014-09-23 A | 2014-09-30 A |  | 100% |  |  | Antonio; Facu; Florencia; Paula | 256h | 256h |
| 206 | 12.6 | Actualizar BD | manual | 8d | 2014-09-20 A | 2014-09-27 A |  | 100% |  |  | Paula | 64h | 64h |
| 207 | 12.7 | Generar fixture Una fase por eliminatoria | manual | 12d | 2014-09-30 A | 2014-10-11 A |  | 100% |  |  | Antonio; Florencia | 192h | 192h |
| 208 | 12.8 | Testear todas las funcionalidades | manual | 15d | 2014-09-20 A | 2014-10-04 A |  | 100% |  |  | Florencia; Paula | 240h | 240h |
| 209 | 12.9 | Corrección de Bugs | manual | 15d | 2014-09-20 A | 2014-10-04 A |  | 100% |  |  | Antonio; Facu; Florencia; Paula | 480h | 480h |
| 210 | 13 | Realizar reunión retrospectiva | manual | 1d | 2014-10-11 A | 2014-10-11 A |  | 100% |  | start no earlier than 2015-01-03 | Antonio; Facu; Florencia; Paula | 32h | 32h |

| ID | WBS | Task | Type | Duration | Start | Finish | Predecessors | Complete | Remaining | Total slack | Free slack | Constraint | Resources | Work | Actual work |
| --- | --- | --- | --- | --- | --- | --- | --- | --- | --- | --- | --- | --- | --- | --- | --- |
| 211 | 14 | **Sprint 7** |  | 22d | 2014-10-11 A | 2014-11-01 | 210 | 99% | 0.32d |  |  |  | Antonio; Facu; Florencia; Paula | 1536h | 800h |
| 212 | 14.1 | Realizar Sprint Planning - Release | manual | 1d | 2014-10-11 A | 2014-10-11 A |  | 100% |  |  |  |  | Antonio; Facu; Florencia; Paula | 32h | 32h |
| 213 | 14.2 | Generar fixture mas de una fase | manual | 1d | 2014-10-18 A | 2014-10-18 A |  | 100% |  |  |  |  | Antonio | 8h | 8h |
| 214 | 14.3 | Registrar para un partido fecha, hora y arbitro a asignar | manual | 15d | 2014-10-11 A | 2014-10-25 A |  | 100% |  |  |  |  | Facu | 120h | 120h |
| 215 | 14.4 | Registrar post partido, sanciones, goles, cambios, jugadores que jugaron | manual | 15d | 2014-10-11 A | 2014-10-25 A |  | 100% |  |  |  |  | Facu | 120h | 120h |
| 216 | 14.5 | Mostrar Estadisticas de Fecha | manual | 1d | 2014-10-21 A | 2014-10-21 A |  | 100% |  |  |  |  | Facu; Florencia | 16h | 16h |
| 217 | 14.6 | Testing de Funcionalidad | manual | 1d | 2014-10-22 A | 2014-10-22 A |  | 100% |  |  |  |  | Paula | 8h | 8h |
| 218 | 14.7 | Corrección de Bugs | manual | 6d | 2014-10-22 A | 2014-10-27 A |  | 100% |  |  |  |  | Antonio; Facu; Florencia; Paula | 192h | 192h |
| 219 | 14.8 | Armar Manual de usuario | manual | 4d | 2014-10-11 A | 2014-10-14 A |  | 100% |  |  |  |  | Paula | 32h | 32h |
| 220 | 14.9 | Generar informe de Impacto Ambiental | manual | 5d | 2014-10-14 A | 2014-10-18 A |  | 100% |  |  |  |  | Paula | 40h | 40h |
| 221 | 14.10 | Revisar Documentos de Requerimientos | manual | 2d | 2014-10-21 A | 2014-10-22 A |  | 100% |  |  |  |  | Paula | 16h | 16h |
| 222 | 14.11 | Revisar Modelado | manual | 2d | 2014-10-21 A | 2014-10-22 A |  | 100% |  |  |  |  | Florencia | 16h | 16h |
| 223 | 14.12 | Revisar Plan de Testing | manual | 1d | 2014-10-18 A | 2014-10-18 A |  | 100% |  |  |  |  | Paula | 8h | 8h |
| 224 | 14.13 | Revisar Reglas de Programación | manual | 3d | 2014-10-21 A | 2014-10-23 A |  | 100% |  |  |  |  | Florencia; Paula | 48h | 48h |
| 225 | 14.14 | Revisar Plan de Configuración | manual | 3d | 2014-10-21 A | 2014-10-23 A |  | 100% |  |  |  |  | Florencia | 24h | 24h |
| 226 | 14.15 | Ver casos de Prueba ejecutados | manual | 1d | 2014-10-24 A | 2014-10-24 A |  | 100% |  |  |  |  | Florencia; Paula | 16h | 16h |
| 227 | 14.16 | Revisar Plan de Riesgos | manual | 1d | 2014-10-16 A | 2014-10-17 A |  | 100% |  |  |  |  | Florencia | 8h | 8h |
| 228 | 14.17 | Revisar informes de seguimiento | manual | 3d | 2014-10-23 A | 2014-10-25 A |  | 100% |  |  |  |  | Florencia; Paula | 48h | 48h |
| 229 | 14.18 | Revisar Documentos de Capacitación e Investigación | manual | 1d | 2014-10-11 A | 2014-10-11 A |  | 100% |  |  |  |  | Florencia; Paula | 16h | 16h |
| 230 | 14.19 | Preparar Presentación de Regularidad | manual | 1d | 2014-10-25 A | 2014-10-25 A |  | 100% |  |  |  |  | Antonio; Facu; Florencia; Paula | 32h | 32h |
| 231 | 14.20 | Realizar Sprint Review | manual | 1d | 2014-10-28 | 2014-10-28 |  |  |  |  |  |  | Antonio; Facu; Florencia; Paula | 32h |  |
| 232 | 15 | Realizar reunión retrospectiva |  | 1d | 2014-11-01 | 2014-11-01 |  |  |  | -1d | 0d | start no earlier than 2014-11-01 | Antonio; Facu; Florencia; Paula | 32h |  |
| 233 | 16 | **Sprint 8** |  | 22d | 2014-11-01 | 2014-11-22 | 232 |  |  |  |  |  |  |  |  |
| 234 | 16.1 | Realizar Sprint Review | manual | 1d | 2014-11-01 | 2014-11-01 |  |  |  |  |  |  |  |  |  |
| 235 | 17 | Realizar reunión retrospectiva |  | 1d | 2015-03-11 | 2015-03-11 | 233 |  |  | -110d | 0d | start no earlier than 2015-03-11 |  |  |  |

| ID | WBS | Task | Type | Duration | Start | Finish | Predecessors | Total slack | Free slack | Constraint |
| --- | --- | --- | --- | --- | --- | --- | --- | --- | --- | --- |
| 236 | 18 | **Sprint 9** |  | 22d | 2014-11-22 | 2014-12-13 | 235 |  |  |  |
| 237 | 18.1 | Realizar Sprint Planning | manual | 1d | 2014-11-22 | 2014-11-22 |  |  |  |  |
| 238 | 18.2 | Analizar y Especificar los requerimientos | manual | 1d | 2014-11-22 | 2014-11-22 |  |  |  |  |
| 239 | 18.3 | **Diseñar Solución** |  | 1d? | 2014-11-22 | 2014-11-22 |  |  |  |  |
| 240 | 18.3.1 | Actualizar modelos existentes | manual | 1d | 2014-11-22 | 2014-11-22 |  |  |  |  |
| 241 | 18.3.2 | Crear nuevos modelos | manual | 1d | 2014-11-22 | 2014-11-22 |  |  |  |  |
| 242 | 18.4 | Desarrollar | manual | 1d | 2014-11-22 | 2014-11-22 |  |  |  |  |
| 243 | 18.5 | Testear | manual | 1d | 2014-11-22 | 2014-11-22 |  |  |  |  |
| 244 | 18.6 | Implementar | manual | 1d | 2014-11-22 | 2014-11-22 |  |  |  |  |
| 245 | 18.7 | Gestionar cambios | manual | 1d | 2014-11-22 | 2014-11-22 |  |  |  |  |
| 246 | 18.8 | Realizar seguimiento y control de riesgos | manual | 1d | 2014-11-22 | 2014-11-22 |  |  |  |  |
| 247 | 18.9 | Realizar Sprint Review | manual | 1d | 2014-11-22 | 2014-11-22 |  |  |  |  |
| 248 | 19 | Realizar reunión retrospectiva |  | 1d | 2014-05-03 | 2014-05-03 |  | 223d |  |  |
| 249 | 20 | **Sprint 10** |  | 22d | 2014-12-13 | 2015-01-03 | 248 |  |  |  |
| 250 | 20.1 | Realizar Sprint Planning | manual | 1d | 2014-12-13 | 2014-12-13 |  |  |  |  |
| 251 | 20.2 | Analizar y Especificar los requerimientos | manual | 1d | 2014-12-13 | 2014-12-13 |  |  |  |  |
| 252 | 20.3 | **Diseñar Solución** |  | 1d | 2014-12-13 | 2014-12-13 |  | 0d |  |  |
| 253 | 20.3.1 | Actualizar modelos existentes | manual | 1d | 2014-12-13 | 2014-12-13 |  |  |  |  |
| 254 | 20.3.2 | Crear nuevos modelos | manual | 1d | 2014-12-13 | 2014-12-13 |  |  |  |  |
| 255 | 20.4 | Desarrollar | manual | 1d | 2014-12-13 | 2014-12-13 |  |  |  |  |
| 256 | 20.5 | Testear | manual | 1d | 2014-12-13 | 2014-12-13 |  |  |  |  |
| 257 | 20.6 | Implementar | manual | 1d | 2014-12-13 | 2014-12-13 |  |  |  |  |
| 258 | 20.7 | Gestionar cambios | manual | 1d | 2014-12-13 | 2014-12-13 |  |  |  |  |
| 259 | 20.8 | Realizar seguimiento y control de riesgos | manual | 1d | 2014-12-13 | 2014-12-13 |  |  |  |  |
| 260 | 20.9 | Realizar Sprint Review | manual | 1d | 2014-12-13 | 2014-12-13 |  |  |  |  |
| 261 | 21 | Realizar reunión retrospectiva |  | 1d | 2015-01-03 | 2015-01-03 |  | -1d | 0d | start no earlier than 2015-01-03 |

| ID | WBS | Task | Type | Duration | Start | Finish | Predecessors |
| --- | --- | --- | --- | --- | --- | --- | --- |
| 262 | 22 | **Sprint 11** |  | 22d | 2015-01-03 | 2015-01-24 | 261 |
| 263 | 22.1 | Realizar Sprint Planning | manual | 1d | 2015-01-03 | 2015-01-03 |  |
| 264 | 22.2 | Analizar y Especificar los requerimientos | manual | 1d | 2015-01-03 | 2015-01-03 |  |
| 265 | 22.3 | Diseñar Solución | manual | 1d | 2015-01-03 | 2015-01-03 |  |
| 266 | 22.4 | Desarrollar | manual | 1d | 2015-01-03 | 2015-01-03 |  |
| 267 | 22.5 | Testear | manual | 1d | 2015-01-03 | 2015-01-03 |  |
| 268 | 22.6 | Implementar | manual | 1d | 2015-01-03 | 2015-01-03 |  |
| 269 | 22.7 | Gestionar cambios | manual | 1d | 2015-01-03 | 2015-01-03 |  |
| 270 | 22.8 | Realizar seguimiento y control de riesgos | manual | 1d | 2015-01-03 | 2015-01-03 |  |
| 271 | 22.9 | Realizar Sprint Review | manual | 1d | 2015-01-03 | 2015-01-03 |  |
| 272 | 23 | Realizar reunión retrospectiva | manual | 1d | 2015-01-24 | 2015-01-24 |  |
| 273 | 24 | **Sprint 12** |  | 21d | 2015-01-24 | 2015-02-13 | 272 |
| 274 | 24.1 | Realizar Sprint Planning | manual | 1d | 2015-01-24 | 2015-01-24 |  |
| 275 | 24.2 | Analizar y Especificar los requerimientos | manual | 1d | 2015-01-24 | 2015-01-24 |  |
| 276 | 24.3 | Diseñar Solución | manual | 1d | 2015-01-24 | 2015-01-24 |  |
| 277 | 24.4 | Desarrollar | manual | 1d | 2015-01-24 | 2015-01-24 |  |
| 278 | 24.5 | Testear | manual | 1d | 2015-01-24 | 2015-01-24 |  |
| 279 | 24.6 | Implementar | manual | 1d | 2015-01-24 | 2015-01-24 |  |
| 280 | 24.7 | Gestionar cambios | manual | 1d | 2015-01-24 | 2015-01-24 |  |
| 281 | 24.8 | Realizar seguimiento y control de riesgos | manual | 1d | 2015-01-24 | 2015-01-24 |  |
| 282 | 24.9 | Realizar Sprint Review | manual | 1d | 2015-01-24 | 2015-01-24 |  |
| 283 | 25 | Realizar reunión retrospectiva | manual | 1d | 2015-02-15 | 2015-02-15 |  |
| 284 | 26 | **Sprint 13** |  | 21d | 2015-02-15 | 2015-03-07 | 283 |
| 285 | 26.1 | Realizar Sprint Planning | manual | 1d | 2015-02-15 | 2015-02-15 |  |
| 286 | 26.2 | Analizar y Especificar los requerimientos | manual | 1d | 2015-02-15 | 2015-02-15 |  |
| 287 | 26.3 | Diseñar Solución | manual | 1d | 2015-02-15 | 2015-02-15 |  |
| 288 | 26.4 | Desarrollar | manual | 1d | 2015-02-15 | 2015-02-15 |  |
| 289 | 26.5 | Testear | manual | 1d | 2015-02-15 | 2015-02-15 |  |
| 290 | 26.6 | Implementar | manual | 1d | 2015-02-15 | 2015-02-15 |  |
| 291 | 26.7 | Gestionar cambios | manual | 1d | 2015-02-15 | 2015-02-15 |  |
| 292 | 26.8 | Realizar seguimiento y control de riesgos | manual | 1d | 2015-02-15 | 2015-02-15 |  |
| 293 | 26.9 | Realizar Sprint Review | manual | 1d | 2015-02-15 | 2015-02-15 |  |
| 294 | 27 | Realizar reunión retrospectiva | manual | 1d | 2015-03-07 | 2015-03-07 |  |

| ID | WBS | Task | Type | Duration | Start | Finish | Predecessors | Total slack |
| --- | --- | --- | --- | --- | --- | --- | --- | --- |
| 295 | 28 | **Sprint 14** |  | 22d | 2015-03-07 | 2015-03-28 | 294 |  |
| 296 | 28.1 | Realizar Sprint Planning | manual | 1d | 2015-03-07 | 2015-03-07 |  |  |
| 297 | 28.2 | Analizar y Especificar los requerimientos | manual | 1d | 2015-03-07 | 2015-03-07 |  |  |
| 298 | 28.3 | Diseñar Solución | manual | 1d | 2015-03-07 | 2015-03-07 |  |  |
| 299 | 28.4 | Desarrollar | manual | 1d | 2015-03-07 | 2015-03-07 |  |  |
| 300 | 28.5 | Testear | manual | 1d | 2015-03-07 | 2015-03-07 |  |  |
| 301 | 28.6 | Implementar | manual | 1d | 2015-03-07 | 2015-03-07 |  |  |
| 302 | 28.7 | Gestionar cambios | manual | 1d | 2015-03-07 | 2015-03-07 |  |  |
| 303 | 28.8 | Realizar seguimiento y control de riesgos | manual | 1d | 2015-03-07 | 2015-03-07 |  |  |
| 304 | 28.9 | Realizar Sprint Review | manual | 1d | 2015-03-07 | 2015-03-07 |  |  |
| 305 | 29 | Realizar reunión retrospectiva | manual | 1d | 2015-03-28 | 2015-03-28 |  |  |
| 306 | 30 | **Sprint 15** |  | 22d | 2015-03-28 | 2015-04-18 | 305 |  |
| 307 | 30.1 | **Realizar Presentación Final** |  | 1d | 2015-03-28 | 2015-03-28 |  | 0d |
| 308 | 30.1.1 | Preparar presentación | manual | 1d | 2015-03-28 | 2015-03-28 |  |  |
| 309 | 30.1.2 | Elaborar presentación | manual | 1d | 2015-03-28 | 2015-03-28 |  |  |
| 310 | 30.1.3 | Exponer | manual | 1d | 2015-03-28 | 2015-03-28 |  |  |
